# GanttDiegoCasero

Schedule from GanttProject, 2022-09-26 to 2022-12-28, baseline: Seguimiento.
IES Domenico Scarlatti
Proyecto realizado por Diego Casero Martín.
Holidays every year on 01-01, 01-06, 05-01, 08-15, 10-12, 11-01, 12-06, 12-08, 12-25

## Calendars

- Project calendar: Mon-Fri working; Sat-Sun off.

## Resources

| Resource | Group | Rate |
| --- | --- | --- |
| Tecnico de campo 4 | Tecnico de campo | 30 |
| Tecnico de campo 3 | Tecnico de campo | 30 |
| Tecnico de campo 2 | Tecnico de campo | 45 |
| Tecnico de campo 1 | Tecnico de campo | 45 |
| Tecnico cartografico 2 | Tecnico cartografico | 70 |
| Tecnico cartografico 1 | Tecnico cartografico | 70 |
| Tecnico ambiental | Tecnico Ambiental | 70 |
| Responsable estudio |  | 150 |
| Programador | Programador | 90 |
| Diseñador web | Diseñador web | 60 |
| Analista GIS | Analista GIS | 100 |

## Schedule

| ID | WBS | Task | Type | Duration | Start | Finish | Predecessors | Complete | Baseline start | Baseline finish | Baseline duration | Resources |
| --- | --- | --- | --- | --- | --- | --- | --- | --- | --- | --- | --- | --- |
| 1 | 1 | **INVENTARIO DEL ARBOLADO DE LA CUIDAD** |  | 58d | 2022-10-03 | 2022-12-27 |  | 5% | 2022-10-03 | 2022-12-22 | 55d | Responsable estudio [50%] |
| 2 | 1.1 | **FASE 1 datos previos** |  | 16d | 2022-10-03 | 2022-10-25 |  | 50% | 2022-10-03 | 2022-10-20 | 13d |  |
| 3 | 1.1.1 | RECOPILACION DE DATOS BASICOS |  | 6d | 2022-10-03 | 2022-10-10 |  | 100% | 2022-10-03 | 2022-10-10 | 6d | Tecnico cartografico 1 [50%]; Tecnico ambiental [50%]; Responsable estudio [20%]; Analista GIS [50%] |
| 4 | 1.1.2 | DEFINICION CARACTERISTICAS DEL INVENTARIO |  | 10d | 2022-10-11 | 2022-10-25 | 3 | 20% | 2022-10-11 | 2022-10-20 | 7d | Tecnico ambiental [50%]; Responsable estudio [50%]; Analista GIS [50%] |
| 5 | 1.2 | **FASE 2 trabajo de campo** |  | 48d | 2022-10-03 | 2022-12-13 |  | 4% | 2022-10-03 | 2022-12-13 | 48d |  |
| 6 | 1.2.1 | PREPARACION CAMPAÑA RECOGIDA DE DATOS |  | 5d | 2022-10-03 | 2022-10-07 |  | 69% | 2022-10-03 | 2022-10-07 | 5d | Tecnico de campo 1 |
| 7 | 1.2.2 | RECOGIDA DE DATOS ZONA NOR |  | 20d | 2022-10-10 | 2022-11-08 | 6 |  | 2022-10-10 | 2022-11-08 | 20d | Tecnico de campo 3; Tecnico de campo 1 |
| 8 | 1.2.3 | REGOGIDA DE DATOS ZONA ESTE |  | 15d | 2022-10-10 | 2022-10-31 | 6 |  | 2022-10-10 | 2022-10-31 | 15d | Tecnico de campo 4; Tecnico de campo 2 |
| 9 | 1.2.4 | RECOGIDA DE DATOS ZONA SUR |  | 23d | 2022-11-09 | 2022-12-13 | 6, 7 |  | 2022-11-09 | 2022-12-13 | 23d | Tecnico de campo 3; Tecnico de campo 1 |
| 10 | 1.2.5 | RECOGIDA DE DATOS ZONA OESTE |  | 16d | 2022-11-02 | 2022-11-23 | 6, 8 |  | 2022-11-02 | 2022-11-23 | 16d | Tecnico de campo 4; Tecnico de campo 2 |
| 11 | 1.2.6 | FINALIZACION DE TRABAJO DE CAMPO | milestone | 0d | 2022-12-14 | 2022-12-14 | 7, 8, 9, 10 |  | 2022-12-14 | 2022-12-14 | 0d |  |
| 12 | 1.3 | **FASE 3 sistema de infroacion geografica** |  | 22d | 2022-10-26 | 2022-11-25 |  |  | 2022-10-21 | 2022-12-02 | 30d |  |
| 13 | 1.3.1 | CREACION DE LA BASE DE DATOS |  | 2d | 2022-10-26 | 2022-10-27 | 4 |  | 2022-10-21 | 2022-11-04 | 10d | Analista GIS [50%] |
| 14 | 1.3.2 | VOLCADO DE INFROMACION EN BD |  | 20d | 2022-10-28 | 2022-11-25 | 13 |  | 2022-11-07 | 2022-12-02 | 20d | Tecnico cartografico 1 [50%]; Analista GIS [50%] |
| 15 | 1.3.3 | CARTOGRAFIADO |  | 15d | 2022-10-28 | 2022-11-18 | 13, 14SS |  | 2022-11-07 | 2022-11-25 | 15d | Tecnico cartografico 2 [50%]; Tecnico cartografico 1 [50%] |
| 16 | 1.4 | **FASE 4 documentacion tecnica** |  | 35d | 2022-10-26 | 2022-12-16 |  |  | 2022-10-21 | 2022-12-13 | 35d |  |
| 17 | 1.4.1 | MEMORIA DESCRIPTIVAS INICIAL |  | 15d | 2022-10-26 | 2022-11-16 | 4 |  | 2022-10-21 | 2022-11-11 | 15d | Tecnico ambiental [50%]; Responsable estudio [50%] |
| 18 | 1.4.2 | FICHAS DESCRIPTIVAS |  | 20d | 2022-11-17 | 2022-12-16 | 17 |  | 2022-11-14 | 2022-12-13 | 20d | Tecnico ambiental [50%] |
| 19 | 1.4.3 | DOCUMENTOS METODITOCOS |  | 7d | 2022-10-26 | 2022-11-04 | 4 |  | 2022-10-21 | 2022-10-31 | 7d | Tecnico ambiental [50%]; Analista GIS [20%] |
| 20 | 1.4.4 | DOCUMENTO FINAL |  | 5d | 2022-12-12 | 2022-12-16 | 15, 18FF, 19 |  | 2022-12-05 | 2022-12-13 | 5d | Tecnico ambiental [50%]; Responsable estudio [50%] |
| 21 | 1.5 | **FASE 5 diseño web** |  | 35d | 2022-10-26 | 2022-12-16 |  |  | 2022-10-21 | 2022-12-13 | 35d |  |
| 22 | 1.5.1 | DEFINICION DE LA WEB |  | 7d | 2022-10-26 | 2022-11-04 | 4 |  | 2022-10-21 | 2022-10-31 | 7d | Programador; Diseñador web; Analista GIS [30%] |
| 23 | 1.5.2 | PUESTA EN MARCHA |  | 20d | 2022-11-17 | 2022-12-16 | 20FF, 22 |  | 2022-11-14 | 2022-12-13 | 20d | Programador; Analista GIS [50%] |
| 24 | 1.5.3 | WEB OPERATIVA | milestone | 0d | 2022-12-19 | 2022-12-19 | 23 |  | 2022-12-14 | 2022-12-14 | 0d |  |

| ID | WBS | Task | Type | Duration | Start | Finish | Predecessors | Baseline start | Baseline finish | Baseline duration | Resources |
| --- | --- | --- | --- | --- | --- | --- | --- | --- | --- | --- | --- |
| 25 | 1.6 | **FASE 6 preparacion entrega final** |  | 7d | 2022-12-19 | 2022-12-27 |  | 2022-12-14 | 2022-12-22 | 7d |  |
| 26 | 1.6.1 | MAQUETACION E IMPRESION DE RESULTADOS |  | 7d | 2022-12-19 | 2022-12-27 | 20, 23 | 2022-12-14 | 2022-12-22 | 7d | Tecnico cartografico 2 [50%]; Tecnico ambiental [50%] |
| 27 | 1.6.2 | ENTREGA FINAL | milestone | 0d | 2022-12-28 | 2022-12-28 | 26 | 2022-12-23 | 2022-12-23 | 0d |  |
| 28 | 2 | tarea_56 |  | 1d | 2022-09-26 | 2022-09-26 |  | 2022-09-26 | 2022-09-26 | 1d |  |
